# Создание карты города

Schedule from MS Project, 2023-03-01 to 2023-08-01, status date 2023-05-12, costs in ₽, A marks actual dates.
Команда разработчиков из 16 человек занимается созданием карты города на основе собственного модуля отображения. Проект должен быть завершен в течение 6 месяцев. Бюджет проекта: 50 000 рублей.

## Calendars

- Стандартный: Mon-Fri 09:00-13:00, 14:00-18:00; Sat-Sun off. Exceptions (off unless hours are given): 2023-03-08 (Международный женский день), 2023-04-29 to 2023-05-01 (Праздник весны и труда), 2023-05-06 to 2023-05-09 (День победы), 2023-06-10 to 2023-06-12 (День России).

## Resources

| Resource | Group | Rate | Cost per use |
| --- | --- | --- | --- |
| Ведущий программист | Программирование | 10 | 100 |
| Программист №1 | Программирование | 7 | 50 |
| Программист №2 | Программирование | 7 | 50 |
| Программист №3 | Программирование | 7 | 50 |
| программист №4 | Программирование | 7 | 50 |
| Системный аналитик | Анализ | 20 | 300 |
| Художник- дизайнер | Дизайн | 8 | 70 |
| Технический писатель | Документация | 5 | 20 |
| Web-дизайнер | Internet | 7 | 50 |
| 3D аниматор | Дизайн | 8 | 70 |
| Мультимедиа- корреспондент | М-медиа | 3 | 20 |
| Наборщик данных №1 | Ввод данных | 2 | 10 |
| Наборщик данных №2 | Ввод данных | 2 | 10 |
| Наборщик данных №3 | Ввод данных | 2 | 10 |
| Наборщик данных №4 | Ввод данных | 2 | 10 |
| Наборщик данных №5 | Ввод данных | 2 | 10 |
| Сервер | Оборудование | 2 |  |

## Schedule

| ID | WBS | Task | Type | Duration | Start | Finish | Predecessors | Remaining | Baseline start | Baseline finish | Baseline duration | Total slack | Free slack | Resources | Work | Cost | Baseline cost | Actual cost |
| --- | --- | --- | --- | --- | --- | --- | --- | --- | --- | --- | --- | --- | --- | --- | --- | --- | --- | --- |
| 1 | 1 | Начало проекта | milestone, manual | 0w | 2023-03-01 09:00 | 2023-03-01 09:00 |  |  | 2023-03-01 09:00 | 2023-03-01 09:00 | 0w |  |  |  |  |  |  |  |
| 2 | 2 | **Создание интерфейса** |  | 81.78d | 2023-03-01 10:00 | 2023-06-29 17:14 | 1 |  | 2023-03-01 10:00 | 2023-06-20 16:14 | 74.65d | 0d | 10.61d |  | 560h | 5,791.6 | 5,650 |  |
| 3 | 2.1 | **Разработка дизайна интерфейса** |  | 31.5d | 2023-03-01 10:00 | 2023-04-14 15:00 |  |  | 2023-03-01 10:00 | 2023-04-06 13:00 | 25.38d | 42.07d | 0d |  | 320h | 2,911.6 | 2,770 |  |
| 4 | 2.1.1 | Разработка 2D графических элементов |  | 3w | 2023-03-01 10:00 | 2023-03-23 11:00 |  |  | 2023-03-01 10:00 | 2023-03-23 11:00 | 3w | 42.07d | 0d | Художник- дизайнер | 120h | 1,030 | 1,030 |  |
| 5 | 2.1.2 | Разработка 3D графических элементов |  | 2w | 2023-03-01 10:00 | 2023-03-24 11:00 | 4SS |  | 2023-03-01 10:00 | 2023-03-16 10:00 | 2w | 42.07d | 0d | 3D аниматор | 80h | 755.6 | 710 |  |
| 6 | 2.1.3 | Создание заставки |  | 3w | 2023-03-24 12:00 | 2023-04-14 15:00 | 5 |  | 2023-03-16 11:00 | 2023-04-06 13:00 | 3w | 42.07d | 45.12d | 3D аниматор | 120h | 1,126 | 1,030 |  |
| 7 | 2.2 | Программирование интерфейса |  | 1.5w | 2023-06-20 12:14 | 2023-06-29 17:14 | 3, 12 |  | 2023-06-08 11:14 | 2023-06-20 16:14 | 1.5w | 0d |  | Программист №3; программист №4; Программист №1; Программист №2 | 240h | 1,880 | 1,880 |  |
| 8 | 3 | **Построение базы объектов** |  | 85.62d | 2023-03-27 09:00 A | 2023-07-28 15:00 |  | 85.62d | 2023-03-23 12:00 | 2023-07-19 13:00 | 80.12d | 1.82d |  | Сервер | 5678h | 15,496 | 15,246 | 300 |
| 9 | 3.1 | Анализ и построение структуры базы объектов |  | 2w | 2023-03-27 09:00 A | 2023-04-17 15:00 |  | 2w | 2023-03-23 12:00 | 2023-04-06 13:00 | 2w | 1.82d | 0d | Системный аналитик | 80h | 1,900 | 1,900 | 300 |
| 10 | 3.2 | Программирование средств обработки базы объектов |  | 2w | 2023-04-17 15:00 | 2023-05-02 15:00 | 9 |  | 2023-04-06 14:00 | 2023-04-20 13:00 | 2w | 1.82d | 0d | Программист №3; программист №4; Программист №2 | 240h | 1,830 | 1,830 |  |
| 11 | 3.3 | Наполнение базы объектов |  | 12w | 2023-05-02 15:00 | 2023-07-28 15:00 | 10 |  | 2023-04-20 14:00 | 2023-07-19 13:00 | 12w | 1.82d |  | Наборщик данных №1; Наборщик данных №2; Наборщик данных №3; Наборщик данных №4; Наборщик данных №5 | 2400h | 4,850 | 4,850 |  |
| 12 | 4 | **Создание ядра GIS** |  | 74.28d | 2023-03-01 10:00 | 2023-06-20 12:14 |  |  | 2023-03-01 10:00 | 2023-06-08 11:14 | 67.15d | 0d |  |  | 1880h | 18,057.97 | 18,057.97 |  |
| 13 | 4.1 | Анализ и проектирование ядра |  | 4.4w | 2023-03-01 10:00 | 2023-04-03 12:00 |  |  | 2023-03-01 10:00 | 2023-03-23 11:00 | 3.02w | 0d |  | Ведущий программист; Системный аналитик | 240h | 4,000 | 4,000 |  |
| 14 | 4.2 | Создание модели ядра |  | 2.02w | 2023-04-03 12:00 | 2023-04-17 12:47 | 13 |  | 2023-03-23 11:00 | 2023-04-06 11:49 | 2.02w | 0d |  | Ведущий программист; Программист №1; Программист №2; Программист №3; программист №4 | 400h | 3,336.46 | 3,336.46 |  |
| 15 | 4.3 | Тестирование модели ядра |  | 1w | 2023-04-17 12:47 | 2023-04-24 12:47 | 14 |  | 2023-04-06 11:49 | 2023-04-13 11:49 | 1w | 0d |  | Программист №1 | 40h | 330 | 330 |  |
| 16 | 4.4 | Создание рабочей версии ядра |  | 7.39w | 2023-04-24 12:47 | 2023-06-20 12:14 | 15 |  | 2023-04-13 11:49 | 2023-06-08 11:14 | 7.39w | 0d | 10.61d | Ведущий программист; Программист №1; Программист №2; Программист №3; программист №4 | 1200h | 9,391.52 | 9,391.52 |  |
| 17 | 5 | Создание мультимедиа-наполнения |  | 6w | 2023-04-14 15:00 | 2023-06-01 12:00 | 3 |  | 2023-04-06 14:00 | 2023-05-24 11:00 | 6w | 42.07d | 45.12d | Мультимедиа- корреспондент | 240h | 740 | 740 |  |
| 18 | 6 | Создание справочной системы |  | 2w | 2023-07-11 11:14 | 2023-07-25 12:14 | 7 |  | 2023-06-30 10:14 | 2023-07-14 11:14 | 2w | 5.04d | 20.75d | Технический писатель | 80h | 420 | 420 |  |
| 19 | 7 | **Создание руководства пользователя** |  | 17.25d | 2023-06-15 17:14 | 2023-07-11 10:14 | 7FS-10d |  | 2023-06-05 16:14 | 2023-06-30 09:14 | 17.25d | 0d | 10.61d |  | 160h | 1,010 | 1,010 |  |
| 20 | 7.1 | Разработка дизайна руководства |  | 1w | 2023-06-15 17:14 | 2023-06-22 17:14 |  |  | 2023-06-05 16:14 | 2023-06-13 17:14 | 1w | 0d |  | Художник- дизайнер | 40h | 390 | 390 |  |
| 21 | 7.2 | Написание руководства пользователя |  | 3w | 2023-06-19 17:14 | 2023-07-11 10:14 | 20SS+2d |  | 2023-06-07 16:14 | 2023-06-30 09:14 | 3w | 0d |  | Технический писатель | 120h | 620 | 620 |  |
| 22 | 8 | **Создание Web-сайта и поддержка** |  | 23.38d | 2023-06-19 17:14 | 2023-07-21 11:14 |  |  | 2023-06-07 16:14 | 2023-07-12 11:14 | 23.5d | 0d |  |  | 248h | 2,138 | 2,106 |  |
| 23 | 8.1 | Разработка структуры сайта |  | 1d | 2023-06-19 17:14 | 2023-06-20 17:14 | 21SS |  | 2023-06-07 16:14 | 2023-06-08 16:14 | 1d | 0d |  | Web-дизайнер | 8h | 106 | 106 |  |
| 24 | 8.2 | Разработка дизайна сайта |  | 1.43w | 2023-06-20 17:14 | 2023-06-30 09:14 | 23 |  | 2023-06-08 16:14 | 2023-06-21 09:14 | 1.45w | 0d |  | 3D аниматор; Web-дизайнер; Художник- дизайнер | 120h | 1,142 | 1,110 |  |
| 25 | 8.3 | Наполнение сайта |  | 3w | 2023-06-30 09:14 | 2023-07-21 11:14 | 24 |  | 2023-06-21 09:14 | 2023-07-12 11:14 | 3w | 0d | 10.61d | Web-дизайнер | 120h | 890 | 890 |  |

| ID | WBS | Task | Type | Duration | Start | Finish | Predecessors | Baseline start | Baseline finish | Baseline duration | Total slack | Free slack | Constraint | Resources | Work | Cost | Baseline cost |
| --- | --- | --- | --- | --- | --- | --- | --- | --- | --- | --- | --- | --- | --- | --- | --- | --- | --- |
| 26 | 9 | **Совещание** |  | 100.12d | 2023-03-01 09:00 | 2023-07-26 10:00 |  | 2023-03-01 09:00 | 2023-07-26 10:00 | 100.12d | 0d |  |  |  | 146h | 1,261 | 1,281 |
| 27 | 9.1 | Совещание 1 | manual | 1h | 2023-03-01 09:00 | 2023-03-01 10:00 |  | 2023-03-01 09:00 | 2023-03-01 10:00 | 1h |  |  | start no earlier than 2023-03-01 09:00 | 3D аниматор; Web-дизайнер; Ведущий программист; Мультимедиа- корреспондент; Системный аналитик; Технический писатель; Художник- дизайнер | 7h | 61 | 61 |
| 28 | 9.2 | Совещание 3 | manual | 1h | 2023-03-15 09:00 | 2023-03-15 10:00 |  | 2023-03-15 09:00 | 2023-03-15 10:00 | 1h |  |  | start no earlier than 2023-03-15 09:00 | 3D аниматор; Web-дизайнер; Ведущий программист; Мультимедиа- корреспондент; Технический писатель; Художник- дизайнер | 6h | 41 | 61 |
| 29 | 9.3 | Совещание 4 | manual | 1h | 2023-03-22 09:00 | 2023-03-22 10:00 |  | 2023-03-22 09:00 | 2023-03-22 10:00 | 1h |  |  | start no earlier than 2023-03-22 09:00 | 3D аниматор; Web-дизайнер; Ведущий программист; Мультимедиа- корреспондент; Системный аналитик; Технический писатель; Художник- дизайнер | 7h | 61 | 61 |
| 30 | 9.4 | Совещание 5 | manual | 1h | 2023-03-29 09:00 | 2023-03-29 10:00 |  | 2023-03-29 09:00 | 2023-03-29 10:00 | 1h |  |  | start no earlier than 2023-03-29 09:00 | 3D аниматор; Web-дизайнер; Ведущий программист; Мультимедиа- корреспондент; Системный аналитик; Технический писатель; Художник- дизайнер | 7h | 61 | 61 |
| 31 | 9.5 | Совещание 6 | manual | 1h | 2023-04-05 09:00 | 2023-04-05 10:00 |  | 2023-04-05 09:00 | 2023-04-05 10:00 | 1h |  |  | start no earlier than 2023-04-05 09:00 | 3D аниматор; Web-дизайнер; Ведущий программист; Мультимедиа- корреспондент; Системный аналитик; Технический писатель; Художник- дизайнер | 7h | 61 | 61 |
| 32 | 9.6 | Совещание 7 | manual | 1h | 2023-04-12 09:00 | 2023-04-12 10:00 |  | 2023-04-12 09:00 | 2023-04-12 10:00 | 1h |  |  | start no earlier than 2023-04-12 09:00 | 3D аниматор; Web-дизайнер; Ведущий программист; Мультимедиа- корреспондент; Системный аналитик; Технический писатель; Художник- дизайнер | 7h | 61 | 61 |
| 33 | 9.7 | Совещание 8 | manual | 1h | 2023-04-19 09:00 | 2023-04-19 10:00 |  | 2023-04-19 09:00 | 2023-04-19 10:00 | 1h |  |  | start no earlier than 2023-04-19 09:00 | 3D аниматор; Web-дизайнер; Ведущий программист; Мультимедиа- корреспондент; Системный аналитик; Технический писатель; Художник- дизайнер | 7h | 61 | 61 |
| 34 | 9.8 | Совещание 9 | manual | 1h | 2023-04-26 09:00 | 2023-04-26 10:00 |  | 2023-04-26 09:00 | 2023-04-26 10:00 | 1h |  |  | start no earlier than 2023-04-26 09:00 | 3D аниматор; Web-дизайнер; Ведущий программист; Мультимедиа- корреспондент; Системный аналитик; Технический писатель; Художник- дизайнер | 7h | 61 | 61 |
| 35 | 9.9 | Совещание 10 | manual | 1h | 2023-05-03 09:00 | 2023-05-03 10:00 |  | 2023-05-03 09:00 | 2023-05-03 10:00 | 1h |  |  | start no earlier than 2023-05-03 09:00 | 3D аниматор; Web-дизайнер; Ведущий программист; Мультимедиа- корреспондент; Системный аналитик; Технический писатель; Художник- дизайнер | 7h | 61 | 61 |
| 36 | 9.10 | Совещание 11 | manual | 1h | 2023-05-10 09:00 | 2023-05-10 10:00 |  | 2023-05-10 09:00 | 2023-05-10 10:00 | 1h |  |  | start no earlier than 2023-05-10 09:00 | 3D аниматор; Web-дизайнер; Ведущий программист; Мультимедиа- корреспондент; Системный аналитик; Технический писатель; Художник- дизайнер | 7h | 61 | 61 |
| 37 | 9.11 | Совещание 12 | manual | 1h | 2023-05-17 09:00 | 2023-05-17 10:00 |  | 2023-05-17 09:00 | 2023-05-17 10:00 | 1h |  |  | start no earlier than 2023-05-17 09:00 | 3D аниматор; Web-дизайнер; Ведущий программист; Мультимедиа- корреспондент; Системный аналитик; Технический писатель; Художник- дизайнер | 7h | 61 | 61 |
| 38 | 9.12 | Совещание 13 | manual | 1h | 2023-05-24 09:00 | 2023-05-24 10:00 |  | 2023-05-24 09:00 | 2023-05-24 10:00 | 1h |  |  | start no earlier than 2023-05-24 09:00 | 3D аниматор; Web-дизайнер; Ведущий программист; Мультимедиа- корреспондент; Системный аналитик; Технический писатель; Художник- дизайнер | 7h | 61 | 61 |
| 39 | 9.13 | Совещание 14 | manual | 1h | 2023-05-31 09:00 | 2023-05-31 10:00 |  | 2023-05-31 09:00 | 2023-05-31 10:00 | 1h |  |  | start no earlier than 2023-05-31 09:00 | 3D аниматор; Web-дизайнер; Ведущий программист; Мультимедиа- корреспондент; Системный аналитик; Технический писатель; Художник- дизайнер | 7h | 61 | 61 |
| 40 | 9.14 | Совещание 15 | manual | 1h | 2023-06-07 09:00 | 2023-06-07 10:00 |  | 2023-06-07 09:00 | 2023-06-07 10:00 | 1h |  |  | start no earlier than 2023-06-07 09:00 | 3D аниматор; Web-дизайнер; Ведущий программист; Мультимедиа- корреспондент; Системный аналитик; Технический писатель; Художник- дизайнер | 7h | 61 | 61 |
| 41 | 9.15 | Совещание 16 | manual | 1h | 2023-06-14 09:00 | 2023-06-14 10:00 |  | 2023-06-14 09:00 | 2023-06-14 10:00 | 1h |  |  | start no earlier than 2023-06-14 09:00 | 3D аниматор; Web-дизайнер; Ведущий программист; Мультимедиа- корреспондент; Системный аналитик; Технический писатель; Художник- дизайнер | 7h | 61 | 61 |
| 42 | 9.16 | Совещание 17 | manual | 1h | 2023-06-21 09:00 | 2023-06-21 10:00 |  | 2023-06-21 09:00 | 2023-06-21 10:00 | 1h |  |  | start no earlier than 2023-06-21 09:00 | 3D аниматор; Web-дизайнер; Ведущий программист; Мультимедиа- корреспондент; Системный аналитик; Технический писатель; Художник- дизайнер | 7h | 61 | 61 |
| 43 | 9.17 | Совещание 18 | manual | 1h | 2023-06-28 09:00 | 2023-06-28 10:00 |  | 2023-06-28 09:00 | 2023-06-28 10:00 | 1h |  |  | start no earlier than 2023-06-28 09:00 | 3D аниматор; Web-дизайнер; Ведущий программист; Мультимедиа- корреспондент; Системный аналитик; Технический писатель; Художник- дизайнер | 7h | 61 | 61 |
| 44 | 9.18 | Совещание 19 | manual | 1h | 2023-07-05 09:00 | 2023-07-05 10:00 |  | 2023-07-05 09:00 | 2023-07-05 10:00 | 1h |  |  | start no earlier than 2023-07-05 09:00 | 3D аниматор; Web-дизайнер; Ведущий программист; Мультимедиа- корреспондент; Системный аналитик; Технический писатель; Художник- дизайнер | 7h | 61 | 61 |
| 45 | 9.19 | Совещание 20 | manual | 1h | 2023-07-12 09:00 | 2023-07-12 10:00 |  | 2023-07-12 09:00 | 2023-07-12 10:00 | 1h |  |  | start no earlier than 2023-07-12 09:00 | 3D аниматор; Web-дизайнер; Ведущий программист; Мультимедиа- корреспондент; Системный аналитик; Технический писатель; Художник- дизайнер | 7h | 61 | 61 |
| 46 | 9.20 | Совещание 21 | manual | 1h | 2023-07-19 09:00 | 2023-07-19 10:00 |  | 2023-07-19 09:00 | 2023-07-19 10:00 | 1h |  |  | start no earlier than 2023-07-19 09:00 | 3D аниматор; Web-дизайнер; Ведущий программист; Мультимедиа- корреспондент; Системный аналитик; Технический писатель; Художник- дизайнер | 7h | 61 | 61 |
| 47 | 9.21 | Совещание 22 | manual | 1h | 2023-07-26 09:00 | 2023-07-26 10:00 |  | 2023-07-26 09:00 | 2023-07-26 10:00 | 1h |  |  | start no earlier than 2023-07-26 09:00 | 3D аниматор; Web-дизайнер; Ведущий программист; Мультимедиа- корреспондент; Системный аналитик; Технический писатель; Художник- дизайнер | 7h | 61 | 61 |
| 48 | 10 | Тестирование сайта |  | 2.43w | 2023-07-14 11:14 | 2023-08-01 12:31 | 22FS-1w | 2023-07-05 11:14 | 2023-07-21 12:18 | 2.43w | 0d |  |  | Ведущий программист; Программист №1; Программист №2; Программист №3; программист №4 | 480h | 3,945.85 | 3,945.85 |
| 49 | 11 | Сдача сайта в эксплуатацию | milestone | 0w | 2023-08-01 12:31 | 2023-08-01 12:31 | 48 | 2023-07-21 12:18 | 2023-07-21 12:18 | 0w | 0d | 10.61d |  |  |  |  |  |
