# Создание карты города

Schedule from MS Project, 2023-03-01 to 2023-08-28, costs in ₽.
Команда разработчиков из 16 человек занимается созданием карты города на основе собственного модуля отображения. Проект должен быть завершен в течение 6 месяцев. Бюджет проекта: 50 000 рублей.

## Calendars

- Стандартный: Mon-Fri 09:00-13:00, 14:00-18:00; Sat-Sun off. Exceptions (off unless hours are given): 2023-03-08 (Международный женский день), 2023-04-29 to 2023-05-01 (Праздник весны и труда), 2023-05-06 to 2023-05-09 (День победы), 2023-06-10 to 2023-06-12 (День России).

## Resources

| Resource | Group | Rate | Cost per use |
| --- | --- | --- | --- |
| Ведущий программист | Программирование | 10 | 100 |
| Программист №1 | Программирование | 7 | 50 |
| Программист №2 | Программирование | 7 | 50 |
| Программист №3 | Программирование | 7 | 50 |
| программист №4 | Программирование | 7 | 50 |
| Системный аналитик | Анализ | 20 | 300 |
| Художник- дизайнер | Дизайн | 8 | 70 |
| Технический писатель | Документация | 5 | 20 |
| Web-дизайнер | Internet | 7 | 50 |
| 3D аниматор | Дизайн | 8 | 70 |
| Мультимедиа- корреспондент | М-медиа | 3 | 20 |
| Наборщик данных №1 | Ввод данных | 2 | 10 |
| Наборщик данных №2 | Ввод данных | 2 | 10 |
| Наборщик данных №3 | Ввод данных | 2 | 10 |
| Наборщик данных №4 | Ввод данных | 2 | 10 |
| Наборщик данных №5 | Ввод данных | 2 | 10 |
| Сервер | Оборудование | 2 |  |

## Schedule

| ID | WBS | Task | Type | Duration | Start | Finish | Predecessors | Total slack | Free slack | Resources | Work | Cost |
| --- | --- | --- | --- | --- | --- | --- | --- | --- | --- | --- | --- | --- |
| 1 | 1 | 1. Начало проекта | milestone, manual | 0w | 2023-03-01 09:00 | 2023-03-01 09:00 |  |  |  |  |  |  |
| 2 | 2 | Анализ требований |  | 1w | 2023-03-01 10:00 | 2023-03-09 10:00 | 1 | 18.26d | 0d | 3D аниматор; Web-дизайнер; Ведущий программист; Мультимедиа- корреспондент; Системный аналитик; Технический писатель; Художник- дизайнер | 280h | 2,440 |
| 3 | 3 | **Проектирование** |  | 40.38d | 2023-03-09 10:00 | 2023-05-05 13:00 | 2 | 8.64d | 0d |  | 1288h | 14,772.46 |
| 4 | 3.1 | **3. Разработка дизайна интерфейса** |  | 30.75d | 2023-03-09 10:00 | 2023-04-20 17:00 |  | 18.26d |  |  | 320h | 3,770 |
| 5 | 3.1.1 | 4. Разработка 2D графических элементов |  | 3w | 2023-03-09 10:00 | 2023-04-06 13:00 |  | 18.26d | 0d | Художник- дизайнер | 120h | 1,030 |
| 6 | 3.1.2 | 5. Разработка 3D графических элементов |  | 2w | 2023-03-09 10:00 | 2023-03-23 12:00 | 5SS | 18.26d | 0d | 3D аниматор | 80h | 710 |
| 7 | 3.1.3 | 6.Создание заставки |  | 3w | 2023-03-23 12:00 | 2023-04-20 17:00 | 6 | 18.26d |  | 3D аниматор | 120h | 1,030 |
| 8 | 3.2 | 9.Анализ и построение структуры базы объектов |  | 2.49w | 2023-03-09 10:00 | 2023-04-13 16:05 |  | 23.38d |  | Системный аналитик; Сервер | 160h | 2,060 |
| 9 | 3.3 | 13.Анализ и проектирование ядра |  | 5.89w | 2023-03-23 11:18 | 2023-05-05 13:00 |  | 8.64d |  | Ведущий программист; Системный аналитик | 240h | 4,000 |
| 10 | 3.4 | 14.Создание модели ядра |  | 2.02w | 2023-03-09 10:00 | 2023-03-23 10:49 |  | 38.91d |  | Ведущий программист; Программист №1; Программист №2; Программист №3; программист №4 | 400h | 3,336.46 |
| 11 | 3.5 | 20. Разработка дизайна руководства |  | 1w | 2023-04-06 14:00 | 2023-04-13 15:00 |  | 23.51d |  | Художник- дизайнер | 40h | 390 |
| 12 | 3.6 | 23. Разработка структуры сайта |  | 1d | 2023-03-09 10:00 | 2023-03-10 10:00 |  | 48.01d |  | Web-дизайнер | 8h | 106 |
| 13 | 3.7 | 24. Разработка дизайна сайта |  | 2.98w | 2023-03-10 10:00 | 2023-04-20 13:00 |  | 18.64d |  | 3D аниматор; Web-дизайнер; Художник- дизайнер | 120h | 1,110 |
| 14 | 4 | **Кодирование** |  | 57.14d | 2023-05-05 13:00 | 2023-07-28 15:08 | 3 | 8.64d | 0d |  | 3288h | 19,531.84 |
| 15 | 4.1 | 7. Программирование интерфейса |  | 1.5w | 2023-07-04 12:08 | 2023-07-13 17:08 | 18 | 8.64d | 0d | Программист №3; программист №4; Программист №1; Программист №2 | 240h | 1,880 |
| 16 | 4.2 | 10.Программирование средств обработки базы объектов |  | 7.5w | 2023-05-05 13:00 | 2023-06-05 14:17 |  | 32.75d | 0d | программист №4; Сервер | 328h | 1,467.43 |
| 17 | 4.3 | 11.Наполнение базы объектов |  | 12w | 2023-06-05 14:17 | 2023-06-25 14:17 | 16 | 32.75d |  | Наборщик данных №1; Наборщик данных №2; Наборщик данных №3; Наборщик данных №4; Наборщик данных №5; Сервер | 960h | 2,970 |
| 18 | 4.4 | 16.Создание рабочей версии ядра |  | 7.78w | 2023-05-05 14:00 | 2023-07-04 12:08 |  | 8.64d | 0d | Ведущий программист; Программист №1; Программист №2; Программист №3 | 1200h | 10,544.41 |
| 19 | 4.5 | 17.Создание мультимедиа-наполнения |  | 6w | 2023-05-05 14:00 | 2023-06-22 18:00 |  | 34.28d |  | Мультимедиа- корреспондент | 240h | 740 |
| 20 | 4.6 | 18. Создание справочной системы |  | 2w | 2023-07-13 17:08 | 2023-07-28 15:08 | 15 | 8.64d |  | Технический писатель | 80h | 420 |
| 21 | 4.7 | 21. Написание руководства пользователя |  | 3w | 2023-05-05 14:00 | 2023-05-31 12:00 |  | 49.91d |  | Технический писатель | 120h | 620 |
| 22 | 4.8 | 25. Наполнение сайта |  | 3w | 2023-05-05 14:00 | 2023-05-31 12:00 |  | 49.91d |  | Web-дизайнер | 120h | 890 |
| 23 | 5 | **Тестирование** |  | 21.25d | 2023-07-28 15:08 | 2023-08-28 17:08 | 14 | 0d |  |  | 520h | 4,421.67 |
| 24 | 5.1 | 15.Тестирование модели ядра |  | 0.25w | 2023-08-25 15:08 | 2023-08-28 17:08 |  | 0d |  | Программист №1; Программист №2; Программист №3; программист №4 | 40h | 480 |
| 25 | 5.2 | 26. Тестирование сайта |  | 2.5w | 2023-07-28 15:08 | 2023-08-16 11:01 |  | 8.64d |  | Ведущий программист; Программист №1; Программист №2; Программист №3; программист №4 | 480h | 3,941.67 |

| ID | WBS | Task | Type | Duration | Start | Finish | Predecessors | Total slack | Constraint | Resources | Work | Cost |
| --- | --- | --- | --- | --- | --- | --- | --- | --- | --- | --- | --- | --- |
| 26 | 6 | **Совещание** |  | 120.12d | 2023-03-01 09:00 | 2023-08-23 10:00 |  | 0d |  |  | 175h | 1,525 |
| 27 | 6.1 | Совещание 1 | manual | 1h | 2023-03-01 09:00 | 2023-03-01 10:00 |  |  | start no earlier than 2023-03-01 09:00 | 3D аниматор; Web-дизайнер; Ведущий программист; Мультимедиа- корреспондент; Системный аналитик; Технический писатель; Художник- дизайнер | 7h | 61 |
| 28 | 6.2 | Совещание 3 | manual | 1h | 2023-03-15 09:00 | 2023-03-15 10:00 |  |  | start no earlier than 2023-03-15 09:00 | 3D аниматор; Web-дизайнер; Ведущий программист; Мультимедиа- корреспондент; Системный аналитик; Технический писатель; Художник- дизайнер | 7h | 61 |
| 29 | 6.3 | Совещание 4 | manual | 1h | 2023-03-22 09:00 | 2023-03-22 10:00 |  |  | start no earlier than 2023-03-22 09:00 | 3D аниматор; Web-дизайнер; Ведущий программист; Мультимедиа- корреспондент; Системный аналитик; Технический писатель; Художник- дизайнер | 7h | 61 |
| 30 | 6.4 | Совещание 5 | manual | 1h | 2023-03-29 09:00 | 2023-03-29 10:00 |  |  | start no earlier than 2023-03-29 09:00 | 3D аниматор; Web-дизайнер; Ведущий программист; Мультимедиа- корреспондент; Системный аналитик; Технический писатель; Художник- дизайнер | 7h | 61 |
| 31 | 6.5 | Совещание 6 | manual | 1h | 2023-04-05 09:00 | 2023-04-05 10:00 |  |  | start no earlier than 2023-04-05 09:00 | 3D аниматор; Web-дизайнер; Ведущий программист; Мультимедиа- корреспондент; Системный аналитик; Технический писатель; Художник- дизайнер | 7h | 61 |
| 32 | 6.6 | Совещание 7 | manual | 1h | 2023-04-12 09:00 | 2023-04-12 10:00 |  |  | start no earlier than 2023-04-12 09:00 | 3D аниматор; Web-дизайнер; Ведущий программист; Мультимедиа- корреспондент; Системный аналитик; Технический писатель; Художник- дизайнер | 7h | 61 |
| 33 | 6.7 | Совещание 8 | manual | 1h | 2023-04-19 09:00 | 2023-04-19 10:00 |  |  | start no earlier than 2023-04-19 09:00 | 3D аниматор; Web-дизайнер; Ведущий программист; Мультимедиа- корреспондент; Системный аналитик; Технический писатель; Художник- дизайнер | 7h | 61 |
| 34 | 6.8 | Совещание 9 | manual | 1h | 2023-04-26 09:00 | 2023-04-26 10:00 |  |  | start no earlier than 2023-04-26 09:00 | 3D аниматор; Web-дизайнер; Ведущий программист; Мультимедиа- корреспондент; Системный аналитик; Технический писатель; Художник- дизайнер | 7h | 61 |
| 35 | 6.9 | Совещание 10 | manual | 1h | 2023-05-03 09:00 | 2023-05-03 10:00 |  |  | start no earlier than 2023-05-03 09:00 | 3D аниматор; Web-дизайнер; Ведущий программист; Мультимедиа- корреспондент; Системный аналитик; Технический писатель; Художник- дизайнер | 7h | 61 |
| 36 | 6.10 | Совещание 11 | manual | 1h | 2023-05-10 09:00 | 2023-05-10 10:00 |  |  | start no earlier than 2023-05-10 09:00 | 3D аниматор; Web-дизайнер; Ведущий программист; Мультимедиа- корреспондент; Системный аналитик; Технический писатель; Художник- дизайнер | 7h | 61 |
| 37 | 6.11 | Совещание 12 | manual | 1h | 2023-05-17 09:00 | 2023-05-17 10:00 |  |  | start no earlier than 2023-05-17 09:00 | 3D аниматор; Web-дизайнер; Ведущий программист; Мультимедиа- корреспондент; Системный аналитик; Технический писатель; Художник- дизайнер | 7h | 61 |
| 38 | 6.12 | Совещание 13 | manual | 1h | 2023-05-24 09:00 | 2023-05-24 10:00 |  |  | start no earlier than 2023-05-24 09:00 | 3D аниматор; Web-дизайнер; Ведущий программист; Мультимедиа- корреспондент; Системный аналитик; Технический писатель; Художник- дизайнер | 7h | 61 |
| 39 | 6.13 | Совещание 14 | manual | 1h | 2023-05-31 09:00 | 2023-05-31 10:00 |  |  | start no earlier than 2023-05-31 09:00 | 3D аниматор; Web-дизайнер; Ведущий программист; Мультимедиа- корреспондент; Системный аналитик; Технический писатель; Художник- дизайнер | 7h | 61 |
| 40 | 6.14 | Совещание 15 | manual | 1h | 2023-06-07 09:00 | 2023-06-07 10:00 |  |  | start no earlier than 2023-06-07 09:00 | 3D аниматор; Web-дизайнер; Ведущий программист; Мультимедиа- корреспондент; Системный аналитик; Технический писатель; Художник- дизайнер | 7h | 61 |
| 41 | 6.15 | Совещание 16 | manual | 1h | 2023-06-14 09:00 | 2023-06-14 10:00 |  |  | start no earlier than 2023-06-14 09:00 | 3D аниматор; Web-дизайнер; Ведущий программист; Мультимедиа- корреспондент; Системный аналитик; Технический писатель; Художник- дизайнер | 7h | 61 |
| 42 | 6.16 | Совещание 17 | manual | 1h | 2023-06-21 09:00 | 2023-06-21 10:00 |  |  | start no earlier than 2023-06-21 09:00 | 3D аниматор; Web-дизайнер; Ведущий программист; Мультимедиа- корреспондент; Системный аналитик; Технический писатель; Художник- дизайнер | 7h | 61 |
| 43 | 6.17 | Совещание 18 | manual | 1h | 2023-06-28 09:00 | 2023-06-28 10:00 |  |  | start no earlier than 2023-06-28 09:00 | 3D аниматор; Web-дизайнер; Ведущий программист; Мультимедиа- корреспондент; Системный аналитик; Технический писатель; Художник- дизайнер | 7h | 61 |
| 44 | 6.18 | Совещание 19 | manual | 1h | 2023-07-05 09:00 | 2023-07-05 10:00 |  |  | start no earlier than 2023-07-05 09:00 | 3D аниматор; Web-дизайнер; Ведущий программист; Мультимедиа- корреспондент; Системный аналитик; Технический писатель; Художник- дизайнер | 7h | 61 |
| 45 | 6.19 | Совещание 20 | manual | 1h | 2023-07-12 09:00 | 2023-07-12 10:00 |  |  | start no earlier than 2023-07-12 09:00 | 3D аниматор; Web-дизайнер; Ведущий программист; Мультимедиа- корреспондент; Системный аналитик; Технический писатель; Художник- дизайнер | 7h | 61 |
| 46 | 6.20 | Совещание 21 | manual | 1h | 2023-07-19 09:00 | 2023-07-19 10:00 |  |  | start no earlier than 2023-07-19 09:00 | 3D аниматор; Web-дизайнер; Ведущий программист; Мультимедиа- корреспондент; Системный аналитик; Технический писатель; Художник- дизайнер | 7h | 61 |
| 47 | 6.21 | Совещание 22 | manual | 1h | 2023-07-26 09:00 | 2023-07-26 10:00 |  |  | start no earlier than 2023-07-26 09:00 | 3D аниматор; Web-дизайнер; Ведущий программист; Мультимедиа- корреспондент; Системный аналитик; Технический писатель; Художник- дизайнер | 7h | 61 |
| 48 | 6.22 | Совещание 23 | manual | 1h | 2023-08-02 09:00 | 2023-08-02 10:00 |  |  | start no earlier than 2023-08-02 09:00 | 3D аниматор; Web-дизайнер; Ведущий программист; Мультимедиа- корреспондент; Системный аналитик; Технический писатель; Художник- дизайнер | 7h | 61 |
| 49 | 6.23 | Совещание 24 | manual | 1h | 2023-08-09 09:00 | 2023-08-09 10:00 |  |  | start no earlier than 2023-08-09 09:00 | 3D аниматор; Web-дизайнер; Ведущий программист; Мультимедиа- корреспондент; Системный аналитик; Технический писатель; Художник- дизайнер | 7h | 61 |
| 50 | 6.24 | Совещание 25 | manual | 1h | 2023-08-16 09:00 | 2023-08-16 10:00 |  |  | start no earlier than 2023-08-16 09:00 | 3D аниматор; Web-дизайнер; Ведущий программист; Мультимедиа- корреспондент; Системный аналитик; Технический писатель; Художник- дизайнер | 7h | 61 |
| 51 | 6.25 | Совещание 26 | manual | 1h | 2023-08-23 09:00 | 2023-08-23 10:00 |  |  | start no earlier than 2023-08-23 09:00 | 3D аниматор; Web-дизайнер; Ведущий программист; Мультимедиа- корреспондент; Системный аналитик; Технический писатель; Художник- дизайнер | 7h | 61 |
| 52 | 7 | 27.Сдача сайта в эксплуатацию | milestone | 0w | 2023-08-28 17:08 | 2023-08-28 17:08 | 23 | 0d |  |  |  |  |
