# task8

Schedule from MS Project, 2023-04-03 to 2023-07-28, costs in ₽.

## Calendars

- Стандартный: Mon-Fri 09:00-13:00, 14:00-18:00; Sat-Sun off. Exceptions (off unless hours are given): 2023-04-25 to 2023-08-03 09:00-13:00, 17:00-18:00 (Проф работы, recurring), 2023-05-01 (День труда), 2023-05-08 to 2023-05-09 (День победы), 2023-06-12 (День России).

## Resources

| Resource | Group | Unit | Rate | Cost per use |
| --- | --- | --- | --- | --- |
| Аналитик |  |  | 500 | 5000 |
| Ведущий программист | Программисты |  | 437.5 | 3000 |
| Программист 1 | Программисты |  | 312.5 | 2000 |
| Программист 2 | Программисты |  | 312.5 | 2000 |
| Программист 3 | Программисты |  | 312.5 | 2000 |
| Технический писатель |  |  | 250 | 1500 |
| Наборщики данных | Технический персонал |  | 218.75 | 1000 |
| Сервер базы данных | Оборудование |  | 25000 | 10000 |
| Картриджи для принтера | Расходные материалы | шт / мес | 2500 |  |
| Бумага | Расходные материалы | пач / мес | 200 |  |
| Специалист для проведения профилактических работ |  |  |  | 3000 |

## Schedule

| ID | WBS | Task | Type | Duration | Start | Finish | Predecessors | Total slack | Free slack | Constraint | Resources | Work | Cost |
| --- | --- | --- | --- | --- | --- | --- | --- | --- | --- | --- | --- | --- | --- |
| 1 | 1 | **рк1** |  | 78d | 2023-04-03 09:00 | 2023-07-28 11:00 |  | 0d |  |  |  | 1336h | 562,700 |
| 2 | 1.1 | Начало реализации проекта | milestone | 0d | 2023-04-03 09:00 | 2023-04-03 09:00 |  | 0d |  |  |  |  |  |
| 3 | 1.2 | **Программирование** |  | 42d | 2023-04-04 09:00 | 2023-06-07 10:00 |  | 0d |  |  | Сервер базы данных | 816h | 352,500 |
| 4 | 1.2.1 | Постановка задачи |  | 5d | 2023-04-04 09:00 | 2023-04-10 18:00 | 2FS+1d | 0d |  |  | Аналитик; Ведущий программист | 80h | 45,500 |
| 5 | 1.2.2 | Разработка интерфейса |  | 10d | 2023-04-11 09:00 | 2023-04-24 18:00 | 4 | 12d | 0d |  | Ведущий программист; Программист 1 | 160h | 65,000 |
| 6 | 1.2.3 | Разработка модулей обработки данных |  | 15d | 2023-04-25 09:00 | 2023-05-19 12:00 | 5 | 12d |  |  | Программист 2; Программист 3 | 240h | 79,000 |
| 7 | 1.2.4 | Разработка базы данных |  | 15d | 2023-04-25 09:00 | 2023-05-19 12:00 | 4 | 0d |  |  | Аналитик; Программист 1 | 240h | 104,500 |
| 8 | 1.2.5 | Заполнение базы данных |  | 12d | 2023-05-19 12:00 | 2023-06-07 10:00 | 7 | 0d |  |  | Наборщики данных | 96h | 22,000 |
| 9 | 1.3 | Программирование завершено | milestone | 0d | 2023-06-07 10:00 | 2023-06-07 10:00 | 6, 8 | 0d |  |  |  |  |  |
| 10 | 1.4 | **Тестирование и отладка** |  | 20d | 2023-05-30 16:00 | 2023-06-29 13:00 |  | 20d |  |  |  | 320h | 125,000 |
| 11 | 1.4.1 | Подготовка тестовых наборов данных |  | 5d | 2023-05-30 16:00 | 2023-06-07 10:00 | 9FS-5d | 20d | 0d |  | Программист 1; Программист 3 | 80h | 29,000 |
| 12 | 1.4.2 | Тестирование и исправление ошибок |  | 15d | 2023-06-07 10:00 | 2023-06-29 13:00 | 11 | 20d | 0d |  | Ведущий программист; Программист 2 | 240h | 95,000 |
| 13 | 1.5 | Отладка завершена | milestone | 0d | 2023-06-29 13:00 | 2023-06-29 13:00 | 12 | 20d | 22.5d |  |  |  |  |
| 14 | 1.6 | **Разработка документации** |  | 25d | 2023-06-22 14:00 | 2023-07-28 11:00 |  | 0d |  |  | Бумага [1 пач / мес]; Картриджи для принтера [2 шт / мес] | 200h | 58,200 |
| 15 | 1.6.1 | Составление программной докуменации |  | 10d | 2023-06-22 14:00 | 2023-07-06 17:00 | 9SS+10d | 0d |  |  | Технический писатель | 80h | 21,500 |
| 16 | 1.6.2 | Составление пользовательской документации |  | 15d | 2023-07-06 17:00 | 2023-07-28 11:00 | 15 | 0d |  |  | Технический писатель | 120h | 31,500 |
| 17 | 1.7 | Конец проекта | milestone | 0d | 2023-07-28 11:00 | 2023-07-28 11:00 | 16 | 0d |  |  |  |  |  |
| 18 | 1.8 | **Профилактика оборудования** |  | 54.5d | 2023-04-25 09:00 | 2023-07-18 12:00 |  | 7.5d | 0d |  |  |  | 27,000 |
| 19 | 1.8.1 | Профилактика оборудования 1 |  | 3h | 2023-04-25 09:00 | 2023-04-25 12:00 |  | 61.62d | 54.12d | start no earlier than 2023-04-25 09:00 | Специалист для проведения профилактических работ |  | 6,000 |
| 20 | 1.8.2 | Профилактика оборудования 2 |  | 3h | 2023-05-10 09:00 | 2023-05-10 12:00 |  | 54d | 46.5d | start no earlier than 2023-05-09 09:00 | Специалист для проведения профилактических работ |  | 6,000 |
| 21 | 1.8.3 | Профилактика оборудования 3 |  | 3h | 2023-05-23 09:00 | 2023-05-23 12:00 |  | 45d | 37.5d | start no earlier than 2023-05-23 09:00 | Специалист для проведения профилактических работ |  | 3,000 |
| 22 | 1.8.4 | Профилактика оборудования 4 |  | 3h | 2023-06-06 09:00 | 2023-06-06 12:00 |  | 35.38d | 27.88d | start no earlier than 2023-06-06 09:00 | Специалист для проведения профилактических работ |  | 3,000 |
| 23 | 1.8.5 | Профилактика оборудования 5 |  | 3h | 2023-06-20 09:00 | 2023-06-20 12:00 |  | 26.75d | 19.25d | start no earlier than 2023-06-20 09:00 | Специалист для проведения профилактических работ |  | 3,000 |
| 24 | 1.8.6 | Профилактика оборудования 6 |  | 3h | 2023-07-04 09:00 | 2023-07-04 12:00 |  | 17.12d | 9.62d | start no earlier than 2023-07-04 09:00 | Специалист для проведения профилактических работ |  | 3,000 |
| 25 | 1.8.7 | Профилактика оборудования 7 |  | 3h | 2023-07-18 09:00 | 2023-07-18 12:00 |  | 7.5d | 0d | start no earlier than 2023-07-18 09:00 | Специалист для проведения профилактических работ |  | 3,000 |
