# 1

Schedule from MS Project, 2023-04-03 to 2023-06-14, costs in ₽.

## Calendars

- Стандартный: Mon-Fri 09:00-13:00, 14:00-18:00; Sat-Sun off. Exceptions (off unless hours are given): 2023-04-29 to 2023-05-01 (Праздник весны и труда), 2023-05-06 to 2023-05-09 (День победы), 2023-06-10 to 2023-06-12 (День России).

## Resources

| Resource | Group | Unit | Rate | Cost per use | Notes |
| --- | --- | --- | --- | --- | --- |
| Соколов | Программисты |  | 437.5 |  | Является ведущим программистом |
| Соломин | Программисты |  | 343.75 |  |  |
| Тимофеев | Программисты |  | 312.5 |  |  |
| Яковлева | Программисты |  | 312.5 |  |  |
| Петров | Дизайнеры |  | 468.75 |  | Является руководителем дизайнерской группы |
| Кузнецов | Дизайнеры |  | 312.5 |  |  |
| Фомина | Редактор сайта |  | 250 |  |  |
| Преподаватели | Преподаватели |  | 700 |  |  |
| Программное обеспечение | ПО |  | 30000 | 5000 |  |
| Картриджи для принтера | Расходные материалы |  | 2500 |  |  |
| Бумага | Расходные материалы | 3 пач/мес | 600 |  |  |

## Schedule

| ID | WBS | Task | Type | Duration | Start | Finish | Predecessors | Baseline start | Baseline finish | Baseline duration | Total slack | Free slack | Resources | Work | Cost | Baseline cost |
| --- | --- | --- | --- | --- | --- | --- | --- | --- | --- | --- | --- | --- | --- | --- | --- | --- |
| 1 | 1 | **Проект** |  | 48.14d | 2023-04-03 | 2023-06-14 |  | 2023-04-03 | 2023-06-23 | 56d | 0d |  |  | 1544h | 652,099.98 | 681,850 |
| 2 | 1.1 | Начало проекта | milestone | 0d | 2023-04-03 | 2023-04-03 |  | 2023-04-03 | 2023-04-03 | 0d | 0d |  |  |  |  |  |
| 3 | 1.2 | Установка ПО |  | 15d | 2023-04-04 | 2023-04-24 | 2FS+1d | 2023-04-04 | 2023-04-24 | 15d | 0d |  | Программное обеспечение; Соколов | 120h | 87,500 | 87,500 |
| 4 | 1.3 | Обучение персонала |  | 17.14d | 2023-04-18 | 2023-05-16 | 3SS+10d | 2023-04-18 | 2023-05-18 | 20d | 0d |  | Преподаватели; Соломин; Тимофеев; Петров; Бумага [1 3 пач/мес]; Кузнецов; Яковлева; Картриджи для принтера; Соколов | 920h | 381,599.98 | 395,100 |
| 5 | 1.4 | **Разработка представительских сайтов** |  | 8d | 2023-05-16 | 2023-05-26 | 4 | 2023-05-19 | 2023-05-30 | 8d | 12d | 0d |  | 80h | 26,000 | 51,000 |
| 6 | 1.4.1 | **Разработка сайта 1** |  | 5d | 2023-05-16 | 2023-05-23 |  | 2023-05-19 | 2023-05-25 | 5d | 12d | 0d |  | 40h | 13,000 | 25,500 |
| 7 | 1.4.1.1 | Разработка дизайна сайта 1 |  | 2d | 2023-05-16 | 2023-05-18 |  |  |  |  | 17d | 0d | Кузнецов | 16h | 5,000 |  |
| 8 | 1.4.1.2 | Программирование сайта 1 |  | 3d | 2023-05-18 | 2023-05-23 | 7 |  |  |  | 17d |  | Тимофеев | 24h | 7,500 |  |
| 9 | 1.4.2 | **Разработка сайта 2** |  | 5d | 2023-05-19 | 2023-05-26 | 6FS-2d | 2023-05-24 | 2023-05-30 | 5d | 12d |  |  | 40h | 13,000 | 25,500 |
| 10 | 1.4.2.1 | Разработка дизайна сайта 1 |  | 2d | 2023-05-19 | 2023-05-23 |  |  |  |  | 17d | 0d | Кузнецов | 16h | 5,000 |  |
| 11 | 1.4.2.2 | Программирование сайта 1 |  | 3d | 2023-05-23 | 2023-05-26 | 10 |  |  |  | 17d |  | Тимофеев | 24h | 7,500 |  |
| 12 | 1.5 | Представительские сайты созданы | milestone | 0d | 2023-05-26 | 2023-05-26 | 5 | 2023-05-30 | 2023-05-30 | 0d | 17d |  |  |  |  |  |
| 13 | 1.6 | **Разработка корпоративного сайта** |  | 20d | 2023-05-16 | 2023-06-14 | 4 | 2023-05-19 | 2023-06-23 | 25d | 0d |  |  | 424h | 157,000 | 148,250 |
| 14 | 1.6.1 | Проектирование сайта |  | 5d | 2023-05-16 | 2023-05-23 |  | 2023-05-19 | 2023-05-25 | 5d | 0d |  | Соколов; Петров | 80h | 36,250 | 36,250 |
| 15 | 1.6.2 | Программирование сайта |  | 10d | 2023-05-23 | 2023-06-06 | 14 | 2023-05-26 | 2023-06-16 | 15d | 0d |  | Соломин; Яковлева; Соколов | 240h | 88,500 | 79,750 |
| 16 | 1.6.3 | Наполнение сайта |  | 3d | 2023-06-01 | 2023-06-06 | 15FS-3d | 2023-06-14 | 2023-06-16 | 3d | 0d |  | Фомина | 24h | 6,000 | 6,000 |
| 17 | 1.6.4 | Тестирование сайта |  | 5d | 2023-06-06 | 2023-06-14 | 16 | 2023-06-19 | 2023-06-23 | 5d | 0d |  | Соломин; Яковлева | 80h | 26,250 | 26,250 |
| 18 | 1.7 | Сдача сайта заказчику | milestone | 0d | 2023-06-14 | 2023-06-14 | 17 | 2023-06-23 | 2023-06-23 | 0d | 0d |  |  |  |  |  |
